# UKMARSBOT

How a schedule from MS Project changed from version to version. A marks actual dates.

## Version 1 (saved 2019-07-13)

Note of the change: Create UKMARSBOT.mpp

| ID | WBS | Task | Duration | Start | Finish | Predecessors | Complete | Total float | Constraint |
| --- | --- | --- | --- | --- | --- | --- | --- | --- | --- |
| 1 | 1 | **First Generation UKMARSBOT** | 147d | 2019-07-08 A | 2020-01-28 |  | 4% | 110d |  |
| 2 | 1.1 | **Initiation** | 6d | 2019-07-08 A | 2019-07-15 |  | 50% | 0d |  |
| 3 |  | Define and Publish Requirements | 3d | 2019-07-08 A | 2019-07-10 A |  | 100% |  |  |
| 4 |  | Define and Publish "Straw Man" Bill of Materials | 3d | 2019-07-08 A | 2019-07-10 |  | 50% | 2d |  |
| 5 |  | Define and Publish Contributor Guide | 5d | 2019-07-08 | 2019-07-12 |  |  | 0d |  |
| 6 |  | Update Summary ReadMe on GitHub | 3d | 2019-07-08 A | 2019-07-10 A |  | 100% |  |  |
| 7 |  | Communicate and invite collaboration | 1d | 2019-07-15 | 2019-07-15 | 3, 4, 5, 6 |  | 0d |  |
| 8 | 1.2 | **Design** | 20d | 2019-07-15 A | 2019-08-09 |  | 5% | 0d |  |
| 9 |  | Requirements & BOM feedback and suggestions | 4d | 2019-07-16 | 2019-07-19 | 7 |  | 0d |  |
| 10 |  | Finalise Requirements and BOM | 1d | 2019-07-22 | 2019-07-22 | 9 |  | 0d |  |
| 11 |  | Agree PCB Design Software | 2d | 2019-07-15 A | 2019-07-16 A |  | 100% |  | start no earlier than 2019-07-15 |
| 12 |  | Select Board Fabricator | 2d | 2019-07-15 | 2019-07-16 |  |  | 18d | start no earlier than 2019-07-15 |
| 13 |  | Design Mother Board | 10d | 2019-07-18 | 2019-07-31 | 11, 10FS-3d |  | 0d |  |
| 14 |  | Design Basic Line Sensor Board | 5d | 2019-07-18 | 2019-07-24 | 11, 10FS-3d |  | 5d |  |
| 15 |  | Design Basic Maze Sensor Board | 5d | 2019-07-18 | 2019-07-24 | 11, 10FS-3d |  | 5d |  |
| 16 |  | Publish Board Designs for Consultation | 1d | 2019-08-01 | 2019-08-01 | 13, 14, 15 |  | 0d |  |
| 17 |  | Board Design feedback and suggestions | 4d | 2019-08-02 | 2019-08-07 | 16 |  | 0d |  |
| 18 |  | Finalise Board Design | 5d | 2019-08-05 | 2019-08-09 | 17FS-3d |  | 0d |  |
| 19 | 1.3 | **Fabrication** | 22d | 2019-08-12 | 2019-09-10 |  |  | 0d |  |
| 20 |  | Send Boards for Fabrication | 1d | 2019-08-12 | 2019-08-12 | 18, 12 |  | 0d |  |
| 21 |  | Fabrication | 20d | 2019-08-13 | 2019-09-09 | 20 |  | 0d |  |
| 22 |  | First Generation Boards available | 1d | 2019-09-10 | 2019-09-10 | 21 |  | 0d |  |
| 23 | 1.4 | **Trials** | 100d | 2019-09-11 | 2020-01-28 |  |  | 0d |  |
| 24 |  | Construction and testing @ KES | 60d | 2019-09-11 | 2019-12-03 | 22 |  | 0d |  |
| 25 |  | User Guide | 20d | 2019-10-09 | 2019-11-05 | 24SS+20d |  | 170d |  |
| 26 |  | Software Development | 60d | 2019-11-06 | 2020-01-28 | 24SS+40d |  | 110d |  |
| 27 |  | Assessment Report | 5d | 2019-10-16 | 2019-10-22 | 24SS+25d |  | 0d |  |
| 28 | 2 | **Second Generation UKMARSBOT** | 130d | 2019-10-23 | 2020-04-21 |  |  | 0d |  |
| 29 |  | Second Generation Development | 130d | 2019-10-23 | 2020-04-21 | 27 |  | 0d |  |

## Version 2 (saved 2019-07-13)

Note of the change: Contributor Guide and Project Plan added

Last finish stays 2020-04-21. Complete tasks 3 → 4.

Changed:

| ID | Task | Start | Finish | Complete | Total float | Other |
| --- | --- | --- | --- | --- | --- | --- |
| 1 | **First Generation UKMARSBOT** |  |  | 4% → 7% | 110d → 60d |  |
| 2 | **Initiation** |  |  | 50% → 83% |  |  |
| 5 | Define and Publish Contributor Guide | 2019-07-08 A | 2019-07-12 A | 0% → 100% | 0d → none |  |
| 9 | Requirements & BOM feedback and suggestions |  |  |  |  | resources David Hannaford → UKMARS Members |
| 17 | Board Design feedback and suggestions |  |  |  |  | resources Peter Harrison → UKMARS Members |

## Version 3 (saved 2019-07-16)

Note of the change: Plan updated to current status

Last finish stays 2020-04-21. Complete tasks 4 → 6.

Changed:

| ID | Task | Start | Finish | Complete | Total float | Predecessors |
| --- | --- | --- | --- | --- | --- | --- |
| 1 | **First Generation UKMARSBOT** |  |  | 7% → 8% |  |  |
| 2 | **Initiation** |  | 2019-07-15 A | 83% → 100% | 0d → none |  |
| 4 | Define and Publish "Straw Man" Bill of Materials |  | 2019-07-10 A | 50% → 100% | 2d → none |  |
| 7 | Communicate and invite collaboration | 2019-07-15 A | 2019-07-15 A | 0% → 100% | 0d → none |  |
| 14 | Design Basic Line Sensor Board | 2019-07-18 → 2019-07-23 (+5d) | 2019-07-24 → 2019-07-29 (+5d) |  | 5d → 2d | 11, 10FS-3d → 11, 10 |
| 15 | Design Basic Maze Sensor Board | 2019-07-18 → 2019-07-23 (+5d) | 2019-07-24 → 2019-07-29 (+5d) |  | 5d → 2d | 11, 10FS-3d → 11, 10 |

## Version 4 (saved 2019-07-25)

Note of the change: Update UKMARSBOT.mpp

Last finish stays 2020-04-21. Complete tasks 6 → 7.

Changed:

| ID | Task | Start | Finish | Complete | Total float |
| --- | --- | --- | --- | --- | --- |
| 1 | **First Generation UKMARSBOT** |  |  | 8% → 10% |  |
| 8 | **Design** |  |  | 5% → 15% |  |
| 9 | Requirements & BOM feedback and suggestions | 2019-07-16 A | 2019-07-19 A | 0% → 100% | 0d → none |

## Version 5 (saved 2019-07-28)

Note of the change: Plan Update

Last finish stays 2020-04-21. Complete tasks 7 → 9.

Changed:

| ID | Task | Start | Finish | Complete | Total float |
| --- | --- | --- | --- | --- | --- |
| 1 | **First Generation UKMARSBOT** |  |  | 10% → 17% |  |
| 8 | **Design** |  |  | 15% → 58% |  |
| 12 | Select Board Fabricator | 2019-07-15 A | 2019-07-16 A | 0% → 100% | 18d → none |
| 13 | Design Mother Board | 2019-07-18 A | 2019-07-31 A | 0% → 100% | 0d → none |
| 14 | Design Basic Line Sensor Board | 2019-07-23 A |  | 0% → 90% |  |

## Version 6 (saved 2019-08-01)

Note of the change: Update plan with progress

Last finish stays 2020-04-21. Complete tasks 9 → 11.

Changed:

| ID | Task | Start | Finish | Complete | Total float |
| --- | --- | --- | --- | --- | --- |
| 1 | **First Generation UKMARSBOT** |  |  | 17% → 19% |  |
| 8 | **Design** |  |  | 58% → 67% |  |
| 10 | Finalise Requirements and BOM | 2019-07-22 A | 2019-07-22 A | 0% → 100% | 2d → none |
| 14 | Design Basic Line Sensor Board |  | 2019-07-29 A | 90% → 100% | 2d → none |
| 16 | Publish Board Designs for Consultation | 2019-08-01 A |  | 0% → 75% | 0d → 1.5d |
| 18 | Finalise Board Design | 2019-08-05 A |  | 0% → 30% |  |

## Version 7 (saved 2019-08-07)

Note of the change: Update UKMARSBOT.mpp

Last finish stays 2020-04-21. Complete tasks 11 → 13.

Changed:

| ID | Task | Start | Finish | Complete | Total float |
| --- | --- | --- | --- | --- | --- |
| 1 | **First Generation UKMARSBOT** |  |  | 19% → 21% |  |
| 8 | **Design** |  |  | 67% → 81% |  |
| 15 | Design Basic Maze Sensor Board | 2019-07-23 A | 2019-07-29 A | 0% → 100% | 4.25d → none |
| 16 | Publish Board Designs for Consultation |  | 2019-08-01 A | 75% → 100% | 1.5d → none |

## Version 8 (saved 2019-09-22)

Note of the change: Plan updated with status

Last finish stays 2020-04-21. Complete tasks 13 → 17.

Changed:

| ID | Task | Start | Finish | Complete | Total float |
| --- | --- | --- | --- | --- | --- |
| 1 | **First Generation UKMARSBOT** |  |  | 21% → 34% |  |
| 8 | **Design** |  | 2019-08-09 A | 81% → 100% | 0d → none |
| 17 | Board Design feedback and suggestions | 2019-08-02 A | 2019-08-07 A | 0% → 100% | 1.5d → none |
| 18 | Finalise Board Design |  | 2019-08-09 A | 30% → 100% | 0d → none |
| 19 | **Fabrication** | 2019-08-12 A |  | 0% → 95% |  |
| 20 | Send Boards for Fabrication | 2019-08-12 A | 2019-08-12 A | 0% → 100% | 0d → none |
| 21 | Fabrication | 2019-08-13 A | 2019-09-09 A | 0% → 100% | 0d → none |
